# Children's Book Schedule

How a schedule from MS Project changed from version to version. A marks actual dates.

## Version 1 (saved 2025-09-22, file Advanced Tracking A_Start.mpp)

| ID | WBS | Task | Duration | Start | Finish | Predecessors | Total float | Constraint |
| --- | --- | --- | --- | --- | --- | --- | --- | --- |
| 1 | 1 | **Editorial staff meeting** | 60.12d | 2015-04-13 08:00 | 2015-07-06 09:00 |  | 103.75d |  |
| 2 |  | Editorial staff meeting 1 | 1h | 2015-04-13 08:00 | 2015-04-13 09:00 |  | 163.75d | start no earlier than 2015-04-13 08:00 |
| 3 |  | Editorial staff meeting 2 | 1h | 2015-04-20 08:00 | 2015-04-20 09:00 |  | 158.75d | start no earlier than 2015-04-20 08:00 |
| 4 |  | Editorial staff meeting 3 | 1h | 2015-04-27 08:00 | 2015-04-27 09:00 |  | 153.75d | start no earlier than 2015-04-27 08:00 |
| 5 |  | Editorial staff meeting 4 | 1h | 2015-05-04 08:00 | 2015-05-04 09:00 |  | 148.75d | start no earlier than 2015-05-04 08:00 |
| 6 |  | Editorial staff meeting 5 | 1h | 2015-05-11 08:00 | 2015-05-11 09:00 |  | 143.75d | start no earlier than 2015-05-11 08:00 |
| 7 |  | Editorial staff meeting 6 | 1h | 2015-05-18 08:00 | 2015-05-18 09:00 |  | 138.75d | start no earlier than 2015-05-18 08:00 |
| 8 |  | Editorial staff meeting 7 | 1h | 2015-05-25 08:00 | 2015-05-25 09:00 |  | 133.75d | start no earlier than 2015-05-25 08:00 |
| 9 |  | Editorial staff meeting 8 | 1h | 2015-06-01 08:00 | 2015-06-01 09:00 |  | 128.75d | start no earlier than 2015-06-01 08:00 |
| 10 |  | Editorial staff meeting 9 | 1h | 2015-06-08 08:00 | 2015-06-08 09:00 |  | 123.75d | start no earlier than 2015-06-08 08:00 |
| 11 |  | Editorial staff meeting 10 | 1h | 2015-06-15 08:00 | 2015-06-15 09:00 |  | 118.75d | start no earlier than 2015-06-15 08:00 |
| 12 |  | Editorial staff meeting 11 | 1h | 2015-06-22 08:00 | 2015-06-22 09:00 |  | 113.75d | start no earlier than 2015-06-22 08:00 |
| 13 |  | Editorial staff meeting 12 | 1h | 2015-06-29 08:00 | 2015-06-29 09:00 |  | 108.75d | start no earlier than 2015-06-29 08:00 |
| 14 |  | Editorial staff meeting 13 | 1h | 2015-07-06 08:00 | 2015-07-06 09:00 |  | 103.75d | start no earlier than 2015-07-06 08:00 |
| 15 | 2 | **Acquisition** | 35.5d | 2015-04-06 08:00 | 2015-05-25 12:00 |  | 0d |  |
| 16 |  | Manuscript received | 0d | 2015-04-06 08:00 | 2015-04-06 08:00 |  | 0d |  |
| 17 |  | Content edit | 15d | 2015-04-06 08:00 | 2015-04-30 10:00 | 16 | 0d |  |
| 18 |  | Original art review | 10.25d | 2015-04-23 10:00 | 2015-05-07 12:00 | 17FS-5d | 0d |  |
| 19 |  | Author review of content edit | 12d | 2015-05-07 13:00 | 2015-05-25 12:00 | 17, 18 | 0d |  |
| 20 |  | Handoff to Editorial | 0d | 2015-05-25 12:00 | 2015-05-25 12:00 | 19 | 0d |  |
| 21 | 3 | **Editorial** | 29.12d | 2015-05-25 13:00 | 2015-07-03 14:00 | 15 | 0d |  |
| 22 |  | Organize manuscript for copyedit | 5.12d | 2015-05-25 13:00 | 2015-06-01 14:00 |  | 0d |  |
| 23 |  | Copyedit | 11.25d | 2015-06-01 14:00 | 2015-06-16 16:00 | 22 | 0d |  |
| 24 |  | Author review of copyedit | 10d | 2015-06-16 16:00 | 2015-06-30 16:00 | 23 | 0d |  |
| 25 |  | Copyedit incorp | 5.12d | 2015-06-26 11:00 | 2015-07-03 14:00 | 24FS-2.5% | 0d |  |
| 26 |  | Handoff to Production | 0d | 2015-07-03 14:00 | 2015-07-03 14:00 | 25 | 0d |  |
| 27 | 4 | **Design and Production** | 58.25d | 2015-07-03 14:00 | 2015-09-23 16:00 | 21 | 0d |  |
| 28 |  | Set pages | 15d | 2015-07-03 14:00 | 2015-07-24 14:00 |  | 0d |  |
| 29 |  | Interior illustration design | 15.25d | 2015-07-03 14:00 | 2015-07-24 16:00 | 28SS | 0d |  |
| 30 | 4.3 | **1st Pages review** | 30d | 2015-07-24 16:00 | 2015-09-04 16:00 | 29 | 0d |  |
| 31 |  | Proofread and index | 10d | 2015-07-24 16:00 | 2015-08-07 16:00 |  | 0d | start no earlier than 2015-07-17 08:00 |
| 32 |  | Incorporate 1st Pages review | 10d | 2015-08-07 16:00 | 2015-08-21 16:00 | 31 | 0d |  |
| 33 |  | Send proofed pages to Production | 0d | 2015-08-21 16:00 | 2015-08-21 16:00 | 32 | 0d |  |
| 34 |  | Enter page corrections and index | 5d | 2015-08-21 16:00 | 2015-08-28 16:00 | 33 | 0d |  |
| 35 |  | Cover design | 5d | 2015-08-28 16:00 | 2015-09-04 16:00 | 34 | 0d |  |
| 36 | 4.4 | **2nd Pages review** | 13d | 2015-09-04 16:00 | 2015-09-23 16:00 |  | 0d |  |
| 37 |  | Proof and review | 6.5d | 2015-09-04 16:00 | 2015-09-15 11:00 | 35 | 0d |  |
| 38 |  | Send proofed pages to Production | 0d | 2015-09-15 11:00 | 2015-09-15 11:00 | 37 | 0d |  |
| 39 |  | Final review | 5d | 2015-09-16 16:00 | 2015-09-23 16:00 | 38 | 0d |  |
| 40 | 4.5 | **Design book's companion website** | 10d | 2015-09-04 16:00 | 2015-09-18 16:00 | 30 | 3d |  |
| 41 |  | Create mockup | 4.5d | 2015-09-04 16:00 | 2015-09-16 16:00 |  | 3d |  |
| 42 |  | Review with author | 2d | 2015-09-16 16:00 | 2015-09-18 16:00 | 41 | 3d |  |
| 43 | 5 | **Color prep and printing** | 46d | 2015-09-23 16:00 | 2015-11-26 16:00 | 40 | 0d |  |
| 44 |  | Send to color house | 1d | 2015-09-23 16:00 | 2015-09-28 16:00 | 36 | 0d |  |
| 45 |  | Generate proofs | 10d | 2015-09-28 16:00 | 2015-10-12 16:00 | 44 | 0d |  |
| 46 |  | Print and ship | 30d | 2015-10-15 16:00 | 2015-11-26 16:00 | 45FS+3d | 0d |  |
| 47 | 6 | **Book launch prep** | 22d | 2015-09-28 16:00 | 2015-10-28 16:00 |  | 21d |  |
| 48 |  | Launch planning | 5d | 2015-09-28 16:00 | 2015-10-05 16:00 | 44 | 21d |  |
| 49 |  | Assign launch team members | 1d | 2015-10-05 16:00 | 2015-10-06 16:00 | 48 | 21d |  |
| 50 |  | Complete author questionnaire | 5d | 2015-10-06 16:00 | 2015-10-13 16:00 | 49 | 21d |  |
| 51 |  | Schedule author interviews | 1d | 2015-10-13 16:00 | 2015-10-14 16:00 | 50 | 21d |  |
| 52 |  | Design and order marketing material | 10d | 2015-10-14 16:00 | 2015-10-28 16:00 | 51 | 21d |  |

## Version 2 (saved 2025-09-22, file Advanced Tracking B_Start.mpp)

Last finish stays 2015-11-26. Complete tasks 0 → 4.

Changed:

| ID | Task | Start | Finish | Complete | Total float | Other |
| --- | --- | --- | --- | --- | --- | --- |
| 1 | **Editorial staff meeting** | 2015-04-13 08:00 A |  | 0% → 15% |  |  |
| 2 | Editorial staff meeting 1 | 2015-04-13 08:00 A | 2015-04-13 09:00 A | 0% → 100% | 163.75d → none |  |
| 3 | Editorial staff meeting 2 | 2015-04-20 08:00 A | 2015-04-20 09:00 A | 0% → 100% | 158.75d → none |  |
| 15 | **Acquisition** | 2015-04-06 08:00 A |  | 0% → 56% |  | baseline finish 2015-05-18 10:00 → 2015-05-25 12:00 |
| 16 | Manuscript received | 2015-04-06 08:00 A | 2015-04-06 08:00 A | 0% → 100% | 0d → none |  |
| 17 | Content edit | 2015-04-06 08:00 A | 2015-04-30 10:00 A | 0% → 100% | 0d → none |  |
| 18 | Original art review | 2015-04-23 10:00 A |  | 0% → 56% |  | baseline start none → 2015-04-23 10:00; baseline finish none → 2015-05-07 12:00 |
| 19 | Author review of content edit |  |  |  |  | baseline start 2015-04-30 10:00 → 2015-05-07 13:00; baseline finish 2015-05-18 10:00 → 2015-05-25 12:00 |
| 20 | Handoff to Editorial |  |  |  |  | baseline start 2015-05-18 10:00 → 2015-05-25 12:00; baseline finish 2015-05-18 10:00 → 2015-05-25 12:00 |
| 21 | **Editorial** |  |  |  |  | baseline start 2015-05-18 10:00 → 2015-05-25 13:00; baseline finish 2015-06-26 11:00 → 2015-07-03 14:00 |
| 22 | Organize manuscript for copyedit |  |  |  |  | baseline start 2015-05-18 10:00 → 2015-05-25 13:00; baseline finish 2015-05-25 11:00 → 2015-06-01 14:00 |
| 23 | Copyedit |  |  |  |  | baseline start 2015-05-25 11:00 → 2015-06-01 14:00; baseline finish 2015-06-09 14:00 → 2015-06-16 16:00 |
| 24 | Author review of copyedit |  |  |  |  | baseline start 2015-06-09 14:00 → 2015-06-16 16:00; baseline finish 2015-06-23 14:00 → 2015-06-30 16:00 |
| 25 | Copyedit incorp |  |  |  |  | baseline start 2015-06-19 09:00 → 2015-06-26 11:00; baseline finish 2015-06-26 11:00 → 2015-07-03 14:00 |
| 26 | Handoff to Production |  |  |  |  | baseline start 2015-06-26 11:00 → 2015-07-03 14:00; baseline finish 2015-06-26 11:00 → 2015-07-03 14:00 |
| 27 | **Design and Production** |  |  |  |  | baseline start 2015-06-26 11:00 → 2015-07-03 14:00; baseline finish 2015-09-09 14:00 → 2015-09-23 16:00 |
| 28 | Set pages |  |  |  |  | baseline start 2015-06-26 11:00 → 2015-07-03 14:00; baseline finish 2015-07-17 11:00 → 2015-07-24 14:00 |
| 29 | Interior illustration design |  |  |  |  | baseline start 2015-06-26 11:00 → 2015-07-03 14:00; baseline finish 2015-07-17 14:00 → 2015-07-24 16:00 |
| 30 | **1st Pages review** |  |  |  |  | baseline start 2015-07-17 14:00 → 2015-07-24 16:00; baseline finish 2015-08-21 14:00 → 2015-09-04 16:00 |
| 31 | Proofread and index |  |  |  |  | baseline start 2015-07-17 14:00 → 2015-07-24 16:00; baseline finish 2015-07-31 14:00 → 2015-08-07 16:00 |
| 32 | Incorporate 1st Pages review |  |  |  |  | baseline start 2015-07-31 14:00 → 2015-08-07 16:00; baseline finish 2015-08-07 14:00 → 2015-08-21 16:00 |
| 33 | Send proofed pages to Production |  |  |  |  | baseline start 2015-08-07 14:00 → 2015-08-21 16:00; baseline finish 2015-08-07 14:00 → 2015-08-21 16:00 |
| 34 | Enter page corrections and index |  |  |  |  | baseline start 2015-08-07 14:00 → 2015-08-21 16:00; baseline finish 2015-08-14 14:00 → 2015-08-28 16:00 |
| 35 | Cover design |  |  |  |  | baseline start 2015-08-14 14:00 → 2015-08-28 16:00; baseline finish 2015-08-21 14:00 → 2015-09-04 16:00 |
| 36 | **2nd Pages review** |  |  |  |  | baseline start 2015-08-21 14:00 → 2015-09-04 16:00; baseline finish 2015-09-09 14:00 → 2015-09-23 16:00 |
| 37 | Proof and review |  |  |  |  | baseline start 2015-08-21 14:00 → 2015-09-04 16:00; baseline finish 2015-09-01 09:00 → 2015-09-15 11:00 |
| 38 | Send proofed pages to Production |  |  |  |  | baseline start 2015-09-01 09:00 → 2015-09-15 11:00; baseline finish 2015-09-01 09:00 → 2015-09-15 11:00 |
| 39 | Final review |  |  |  |  | baseline start 2015-09-02 14:00 → 2015-09-16 16:00; baseline finish 2015-09-09 14:00 → 2015-09-23 16:00 |
| 40 | **Design book's companion website** |  |  |  |  | baseline start 2015-08-21 14:00 → 2015-09-04 16:00; baseline finish 2015-09-04 14:00 → 2015-09-18 16:00 |
| 41 | Create mockup |  |  |  |  | baseline start 2015-08-21 14:00 → 2015-09-04 16:00; baseline finish 2015-09-02 14:00 → 2015-09-16 16:00 |
| 42 | Review with author |  |  |  |  | baseline start 2015-09-02 14:00 → 2015-09-16 16:00; baseline finish 2015-09-04 14:00 → 2015-09-18 16:00 |
| 43 | **Color prep and printing** |  |  |  |  | baseline start 2015-09-09 14:00 → 2015-09-23 16:00; baseline finish 2015-11-12 14:00 → 2015-11-26 16:00 |
| 44 | Send to color house |  |  |  |  | baseline start 2015-09-09 14:00 → 2015-09-23 16:00; baseline finish 2015-09-14 14:00 → 2015-09-28 16:00 |
| 45 | Generate proofs |  |  |  |  | baseline start 2015-09-14 14:00 → 2015-09-28 16:00; baseline finish 2015-09-28 14:00 → 2015-10-12 16:00 |
| 46 | Print and ship |  |  |  |  | baseline start 2015-10-01 14:00 → 2015-10-15 16:00; baseline finish 2015-11-12 14:00 → 2015-11-26 16:00 |
| 47 | **Book launch prep** |  |  |  |  | baseline start 2015-09-04 14:00 → 2015-09-28 16:00; baseline finish 2015-10-02 14:00 → 2015-10-28 16:00 |
| 48 | Launch planning |  |  |  |  | baseline start 2015-09-04 14:00 → 2015-09-28 16:00; baseline finish 2015-09-16 14:00 → 2015-10-05 16:00 |
| 49 | Assign launch team members |  |  |  |  | baseline start 2015-09-16 14:00 → 2015-10-05 16:00; baseline finish 2015-09-17 14:00 → 2015-10-06 16:00 |
| 50 | Complete author questionnaire |  |  |  |  | baseline start 2015-09-17 14:00 → 2015-10-06 16:00; baseline finish 2015-09-24 14:00 → 2015-10-13 16:00 |
| 51 | Schedule author interviews |  |  |  |  | baseline start 2015-09-24 14:00 → 2015-10-13 16:00; baseline finish 2015-09-25 14:00 → 2015-10-14 16:00 |
| 52 | Design and order marketing material |  |  |  |  | baseline start 2015-09-25 14:00 → 2015-10-14 16:00; baseline finish 2015-10-02 14:00 → 2015-10-28 16:00 |

## Version 3 (saved 2025-09-22, file Advanced Tracking C_Start.mpp)

Last finish stays 2015-11-26. Complete tasks 4 → 13.

Changed:

| ID | Task | Start | Finish | Duration | Complete | Total float |
| --- | --- | --- | --- | --- | --- | --- |
| 1 | **Editorial staff meeting** |  |  |  | 15% → 54% | 103.75d → 103.88d |
| 4 | Editorial staff meeting 3 | 2015-04-27 08:00 A | 2015-04-27 09:00 A |  | 0% → 100% | 153.75d → none |
| 5 | Editorial staff meeting 4 | 2015-05-04 08:00 A | 2015-05-04 09:00 A |  | 0% → 100% | 148.75d → none |
| 6 | Editorial staff meeting 5 | 2015-05-11 08:00 A | 2015-05-11 09:00 A |  | 0% → 100% | 143.75d → none |
| 7 | Editorial staff meeting 6 | 2015-05-18 08:00 A | 2015-05-18 09:00 A |  | 0% → 100% | 138.75d → none |
| 8 | Editorial staff meeting 7 | 2015-05-25 08:00 A | 2015-05-25 09:00 A |  | 0% → 100% | 133.75d → none |
| 15 | **Acquisition** |  | 2015-05-25 12:00 → 2015-05-26 17:00 A (+1d) | 35.5d → 37d | 56% → 100% | 0d → none |
| 18 | Original art review |  | 2015-05-07 12:00 A |  | 56% → 100% | 0d → none |
| 19 | Author review of content edit | 2015-05-07 13:00 A | 2015-05-25 12:00 → 2015-05-26 17:00 A (+1d) | 12d → 13.5d | 0% → 100% | 0d → none |
| 20 | Handoff to Editorial | 2015-05-25 12:00 → 2015-05-26 17:00 A (+1d) | 2015-05-25 12:00 → 2015-05-26 17:00 A (+1d) |  | 0% → 100% | 0d → none |
| 21 | **Editorial** | 2015-05-25 13:00 → 2015-05-27 08:00 A (+2d) | 2015-07-03 14:00 → 2015-07-07 12:00 (+4d) | 29.12d → 29.5d | 0% → 15% | 0d → 1.75d |
| 22 | Organize manuscript for copyedit | 2015-05-25 13:00 → 2015-05-27 08:00 A (+2d) | 2015-06-01 14:00 → 2015-06-02 15:00 A (+1d) | 5.12d → 4.75d | 0% → 100% | 0d → none |
| 23 | Copyedit | 2015-06-01 14:00 → 2015-06-02 15:00 (+1d) | 2015-06-16 16:00 → 2015-06-18 15:00 (+2d) | 11.25d → 11.5d |  | 0d → 0.25d |
| 24 | Author review of copyedit | 2015-06-16 16:00 → 2015-06-18 15:00 (+2d) | 2015-06-30 16:00 → 2015-07-02 15:00 (+2d) |  |  | 0d → 0.25d |
| 25 | Copyedit incorp | 2015-06-26 11:00 → 2015-06-30 10:00 (+4d) | 2015-07-03 14:00 → 2015-07-07 12:00 (+4d) |  |  | 0d → 0.25d |
| 26 | Handoff to Production | 2015-07-03 14:00 → 2015-07-07 12:00 (+4d) | 2015-07-03 14:00 → 2015-07-07 12:00 (+4d) |  |  | 0d → 0.25d |
| 27 | **Design and Production** | 2015-07-03 14:00 → 2015-07-07 13:00 (+4d) | 2015-09-23 16:00 → 2015-09-25 15:00 (+2d) |  |  | 0d → 0.25d |
| 28 | Set pages | 2015-07-03 14:00 → 2015-07-07 13:00 (+4d) | 2015-07-24 14:00 → 2015-07-28 12:00 (+4d) |  |  | 0d → 0.25d |
| 29 | Interior illustration design | 2015-07-03 14:00 → 2015-07-07 13:00 (+4d) | 2015-07-24 16:00 → 2015-07-28 15:00 (+4d) |  |  | 0d → 0.25d |
| 30 | **1st Pages review** | 2015-07-24 16:00 → 2015-07-28 15:00 (+4d) | 2015-09-04 16:00 → 2015-09-08 15:00 (+4d) |  |  | 0d → 1.75d |
| 31 | Proofread and index | 2015-07-24 16:00 → 2015-07-28 15:00 (+4d) | 2015-08-07 16:00 → 2015-08-11 15:00 (+4d) |  |  | 0d → 0.25d |
| 32 | Incorporate 1st Pages review | 2015-08-07 16:00 → 2015-08-11 15:00 (+4d) | 2015-08-21 16:00 → 2015-08-25 15:00 (+4d) |  |  | 0d → 0.25d |
| 33 | Send proofed pages to Production | 2015-08-21 16:00 → 2015-08-25 15:00 (+4d) | 2015-08-21 16:00 → 2015-08-25 15:00 (+4d) |  |  | 0d → 0.25d |
| 34 | Enter page corrections and index | 2015-08-21 16:00 → 2015-08-25 15:00 (+4d) | 2015-08-28 16:00 → 2015-09-01 15:00 (+4d) |  |  | 0d → 0.25d |
| 35 | Cover design | 2015-08-28 16:00 → 2015-09-01 15:00 (+4d) | 2015-09-04 16:00 → 2015-09-08 15:00 (+4d) |  |  | 0d → 0.25d |
| 36 | **2nd Pages review** | 2015-09-04 16:00 → 2015-09-08 15:00 (+4d) | 2015-09-23 16:00 → 2015-09-25 15:00 (+2d) |  |  | 0d → 0.25d |
| 37 | Proof and review | 2015-09-04 16:00 → 2015-09-08 15:00 (+4d) | 2015-09-15 11:00 → 2015-09-17 10:00 (+2d) |  |  | 0d → 0.25d |
| 38 | Send proofed pages to Production | 2015-09-15 11:00 → 2015-09-17 10:00 (+2d) | 2015-09-15 11:00 → 2015-09-17 10:00 (+2d) |  |  | 0d → 0.25d |
| 39 | Final review | 2015-09-16 16:00 → 2015-09-18 15:00 (+2d) | 2015-09-23 16:00 → 2015-09-25 15:00 (+2d) |  |  | 0d → 0.25d |
| 40 | **Design book's companion website** | 2015-09-04 16:00 → 2015-09-08 15:00 (+4d) | 2015-09-18 16:00 → 2015-09-22 15:00 (+4d) |  |  | 3d → 3.25d |
| 41 | Create mockup | 2015-09-04 16:00 → 2015-09-08 15:00 (+4d) | 2015-09-16 16:00 → 2015-09-18 15:00 (+2d) |  |  | 3d → 3.25d |
| 42 | Review with author | 2015-09-16 16:00 → 2015-09-18 15:00 (+2d) | 2015-09-18 16:00 → 2015-09-22 15:00 (+4d) |  |  | 3d → 3.25d |
| 43 | **Color prep and printing** | 2015-09-23 16:00 → 2015-09-28 08:00 (+5d) | 2015-11-26 16:00 → 2015-11-26 17:00 | 46d → 44d |  |  |
| 44 | Send to color house | 2015-09-23 16:00 → 2015-09-28 08:00 (+5d) | 2015-09-28 16:00 → 2015-09-28 17:00 |  |  |  |
| 45 | Generate proofs | 2015-09-28 16:00 → 2015-09-29 08:00 (+1d) | 2015-10-12 16:00 → 2015-10-12 17:00 |  |  |  |
| 46 | Print and ship | 2015-10-15 16:00 → 2015-10-16 08:00 (+1d) | 2015-11-26 16:00 → 2015-11-26 17:00 |  |  |  |
| 47 | **Book launch prep** | 2015-09-28 16:00 → 2015-09-29 08:00 (+1d) | 2015-10-28 16:00 → 2015-10-28 17:00 |  |  |  |
| 48 | Launch planning | 2015-09-28 16:00 → 2015-09-29 08:00 (+1d) | 2015-10-05 16:00 → 2015-10-05 17:00 |  |  |  |
| 49 | Assign launch team members | 2015-10-05 16:00 → 2015-10-06 08:00 (+1d) | 2015-10-06 16:00 → 2015-10-06 17:00 |  |  |  |
| 50 | Complete author questionnaire | 2015-10-06 16:00 → 2015-10-07 08:00 (+1d) | 2015-10-13 16:00 → 2015-10-13 17:00 |  |  |  |
| 51 | Schedule author interviews | 2015-10-13 16:00 → 2015-10-14 08:00 (+1d) | 2015-10-14 16:00 → 2015-10-14 17:00 |  |  |  |
| 52 | Design and order marketing material | 2015-10-14 16:00 → 2015-10-15 08:00 (+1d) | 2015-10-28 16:00 → 2015-10-28 17:00 |  |  |  |

## Version 4 (data date 2025-09-22, saved 2025-09-22, file Advanced Tracking D_Start.mpp)

Last finish stays 2015-11-26. Complete tasks 13 → 41.

Changed:

| ID | Task | Start | Finish | Duration | Complete | Total float | Other |
| --- | --- | --- | --- | --- | --- | --- | --- |
| 1 | **Editorial staff meeting** | 2015-04-13 08:00 A → 2015-04-13 A | 2015-07-06 09:00 → 2015-08-05 A (+30d) | 60.12d → 82.12d | 54% → 100% | 103.88d → none | baseline start 2015-04-13 08:00 → 2015-04-13; baseline finish 2015-07-06 09:00 → 2015-07-06 |
| 2 | Editorial staff meeting 1 | 2015-04-13 08:00 A → 2015-04-13 A | 2015-04-13 09:00 A → 2015-04-13 A |  |  |  | constraint start no earlier than 2015-04-13 08:00 → start no earlier than 2015-04-13; baseline start 2015-04-13 08:00 → 2015-04-13; baseline finish 2015-04-13 09:00 → 2015-04-13 |
| 3 | Editorial staff meeting 2 | 2015-04-20 08:00 A → 2015-04-20 A | 2015-04-20 09:00 A → 2015-04-20 A |  |  |  | constraint start no earlier than 2015-04-20 08:00 → start no earlier than 2015-04-20; baseline start 2015-04-20 08:00 → 2015-04-20; baseline finish 2015-04-20 09:00 → 2015-04-20 |
| 4 | Editorial staff meeting 3 | 2015-04-27 08:00 A → 2015-04-27 A | 2015-04-27 09:00 A → 2015-04-27 A |  |  |  | constraint start no earlier than 2015-04-27 08:00 → start no earlier than 2015-04-27; baseline start 2015-04-27 08:00 → 2015-04-27; baseline finish 2015-04-27 09:00 → 2015-04-27 |
| 5 | Editorial staff meeting 4 | 2015-05-04 08:00 A → 2015-05-04 A | 2015-05-04 09:00 A → 2015-05-04 A |  |  |  | constraint start no earlier than 2015-05-04 08:00 → start no earlier than 2015-05-04; baseline start 2015-05-04 08:00 → 2015-05-04; baseline finish 2015-05-04 09:00 → 2015-05-04 |
| 6 | Editorial staff meeting 5 | 2015-05-11 08:00 A → 2015-05-11 A | 2015-05-11 09:00 A → 2015-05-11 A |  |  |  | constraint start no earlier than 2015-05-11 08:00 → start no earlier than 2015-05-11; baseline start 2015-05-11 08:00 → 2015-05-11; baseline finish 2015-05-11 09:00 → 2015-05-11 |
| 7 | Editorial staff meeting 6 | 2015-05-18 08:00 A → 2015-05-18 A | 2015-05-18 09:00 A → 2015-05-18 A |  |  |  | constraint start no earlier than 2015-05-18 08:00 → start no earlier than 2015-05-18; baseline start 2015-05-18 08:00 → 2015-05-18; baseline finish 2015-05-18 09:00 → 2015-05-18 |
| 8 | Editorial staff meeting 7 | 2015-05-25 08:00 A → 2015-05-25 A | 2015-05-25 09:00 A → 2015-05-25 A |  |  |  | constraint start no earlier than 2015-05-25 08:00 → start no earlier than 2015-05-25; baseline start 2015-05-25 08:00 → 2015-05-25; baseline finish 2015-05-25 09:00 → 2015-05-25 |
| 9 | Editorial staff meeting 8 | 2015-06-01 08:00 → 2015-08-04 A (+64d) | 2015-06-01 09:00 → 2015-08-05 A (+65d) | 1h → 2h | 0% → 100% | 128.88d → none | constraint start no earlier than 2015-06-01 08:00 → start no earlier than 2015-08-04; baseline start 2015-06-01 08:00 → 2015-06-01; baseline finish 2015-06-01 09:00 → 2015-06-01 |
| 10 | Editorial staff meeting 9 | 2015-06-08 08:00 → 2015-08-04 A (+57d) | 2015-06-08 09:00 → 2015-08-05 A (+58d) | 1h → 2h | 0% → 100% | 123.88d → none | constraint start no earlier than 2015-06-08 08:00 → start no earlier than 2015-08-04; baseline start 2015-06-08 08:00 → 2015-06-08; baseline finish 2015-06-08 09:00 → 2015-06-08 |
| 11 | Editorial staff meeting 10 | 2015-06-15 08:00 → 2015-08-04 A (+50d) | 2015-06-15 09:00 → 2015-08-05 A (+51d) | 1h → 2h | 0% → 100% | 118.88d → none | constraint start no earlier than 2015-06-15 08:00 → start no earlier than 2015-08-04; baseline start 2015-06-15 08:00 → 2015-06-15; baseline finish 2015-06-15 09:00 → 2015-06-15 |
| 12 | Editorial staff meeting 11 | 2015-06-22 08:00 → 2015-08-04 A (+43d) | 2015-06-22 09:00 → 2015-08-05 A (+44d) | 1h → 2h | 0% → 100% | 113.88d → none | constraint start no earlier than 2015-06-22 08:00 → start no earlier than 2015-08-04; baseline start 2015-06-22 08:00 → 2015-06-22; baseline finish 2015-06-22 09:00 → 2015-06-22 |
| 13 | Editorial staff meeting 12 | 2015-06-29 08:00 → 2015-08-04 A (+36d) | 2015-06-29 09:00 → 2015-08-05 A (+37d) | 1h → 2h | 0% → 100% | 108.88d → none | constraint start no earlier than 2015-06-29 08:00 → start no earlier than 2015-08-04; baseline start 2015-06-29 08:00 → 2015-06-29; baseline finish 2015-06-29 09:00 → 2015-06-29 |
| 14 | Editorial staff meeting 13 | 2015-07-06 08:00 → 2015-08-04 A (+29d) | 2015-07-06 09:00 → 2015-08-05 A (+30d) | 1h → 2h | 0% → 100% | 103.88d → none | constraint start no earlier than 2015-07-06 08:00 → start no earlier than 2015-08-04; baseline start 2015-07-06 08:00 → 2015-07-06; baseline finish 2015-07-06 09:00 → 2015-07-06 |
| 15 | **Acquisition** | 2015-04-06 08:00 A → 2015-04-06 A | 2015-05-26 17:00 A → 2015-05-26 A |  |  |  | baseline start 2015-04-06 08:00 → 2015-04-06; baseline finish 2015-05-25 12:00 → 2015-05-25 |
| 16 | Manuscript received | 2015-04-06 08:00 A → 2015-04-06 A | 2015-04-06 08:00 A → 2015-04-06 A |  |  |  | baseline start 2015-04-06 08:00 → 2015-04-06; baseline finish 2015-04-06 08:00 → 2015-04-06 |
| 17 | Content edit | 2015-04-06 08:00 A → 2015-04-06 A | 2015-04-30 10:00 A → 2015-04-30 A |  |  |  | baseline start 2015-04-06 08:00 → 2015-04-06; baseline finish 2015-04-30 10:00 → 2015-04-30 |
| 18 | Original art review | 2015-04-23 10:00 A → 2015-04-23 A | 2015-05-07 12:00 A → 2015-05-07 A |  |  |  | baseline start 2015-04-23 10:00 → 2015-04-23; baseline finish 2015-05-07 12:00 → 2015-05-07 |
| 19 | Author review of content edit | 2015-05-07 13:00 A → 2015-05-07 A | 2015-05-26 17:00 A → 2015-05-26 A |  |  |  | baseline start 2015-05-07 13:00 → 2015-05-07; baseline finish 2015-05-25 12:00 → 2015-05-25 |
| 20 | Handoff to Editorial | 2015-05-26 17:00 A → 2015-05-26 A | 2015-05-26 17:00 A → 2015-05-26 A |  |  |  | baseline start 2015-05-25 12:00 → 2015-05-25; baseline finish 2015-05-25 12:00 → 2015-05-25 |
| 21 | **Editorial** | 2015-05-27 08:00 A → 2015-05-27 A | 2015-07-07 12:00 → 2015-07-06 A (-1d) | 29.5d → 28.4d | 15% → 100% | 1.75d → none | baseline start 2015-05-25 13:00 → 2015-05-25; baseline finish 2015-07-03 14:00 → 2015-07-03 |
| 22 | Organize manuscript for copyedit | 2015-05-27 08:00 A → 2015-05-27 A | 2015-06-02 15:00 A → 2015-06-02 A | 4.75d → 5d |  |  | baseline start 2015-05-25 13:00 → 2015-05-25; baseline finish 2015-06-01 14:00 → 2015-06-01 |
| 23 | Copyedit | 2015-06-02 15:00 → 2015-06-03 A (+1d) | 2015-06-18 15:00 → 2015-06-17 A (-1d) | 11.5d → 10.5d | 0% → 100% | 0.25d → none | baseline start 2015-06-01 14:00 → 2015-06-01; baseline finish 2015-06-16 16:00 → 2015-06-16 |
| 24 | Author review of copyedit | 2015-06-18 15:00 → 2015-06-17 A (-1d) | 2015-07-02 15:00 → 2015-07-01 A (-1d) | 10d → 10.2d | 0% → 100% | 0.25d → none | baseline start 2015-06-16 16:00 → 2015-06-16; baseline finish 2015-06-30 16:00 → 2015-06-30 |
| 25 | Copyedit incorp | 2015-06-30 10:00 → 2015-06-29 A (-1d) | 2015-07-07 12:00 → 2015-07-06 A (-1d) |  | 0% → 100% | 0.25d → none | baseline start 2015-06-26 11:00 → 2015-06-26; baseline finish 2015-07-03 14:00 → 2015-07-03 |
| 26 | Handoff to Production | 2015-07-07 12:00 → 2015-07-06 A (-1d) | 2015-07-07 12:00 → 2015-07-06 A (-1d) |  | 0% → 100% | 0.25d → none | baseline start 2015-07-03 14:00 → 2015-07-03; baseline finish 2015-07-03 14:00 → 2015-07-03 |
| 27 | **Design and Production** | 2015-07-07 13:00 → 2015-07-06 A (-1d) | 2015-09-25 15:00 → 2015-09-25 | 58.25d → 59.6d | 0% → 99% | 0.25d → 1d | baseline start 2015-07-03 14:00 → 2015-07-03; baseline finish 2015-09-23 16:00 → 2015-09-23 |
| 28 | Set pages | 2015-07-07 13:00 → 2015-07-06 A (-1d) | 2015-07-28 12:00 → 2015-07-27 A (-1d) |  | 0% → 100% | 0.25d → none | baseline start 2015-07-03 14:00 → 2015-07-03; baseline finish 2015-07-24 14:00 → 2015-07-24 |
| 29 | Interior illustration design | 2015-07-07 13:00 → 2015-07-06 A (-1d) | 2015-07-28 15:00 → 2015-07-29 A (+1d) | 15.25d → 17.6d | 0% → 100% | 0.25d → none | baseline start 2015-07-03 14:00 → 2015-07-03; baseline finish 2015-07-24 16:00 → 2015-07-24 |
| 30 | **1st Pages review** | 2015-07-28 15:00 → 2015-07-30 A (+2d) | 2015-09-08 15:00 → 2015-09-09 A (+1d) |  | 0% → 100% | 1.75d → none | baseline start 2015-07-24 16:00 → 2015-07-24; baseline finish 2015-09-04 16:00 → 2015-09-04 |
| 31 | Proofread and index | 2015-07-28 15:00 → 2015-07-30 A (+2d) | 2015-08-11 15:00 → 2015-08-12 A (+1d) |  | 0% → 100% | 0.25d → none | constraint start no earlier than 2015-07-17 08:00 → start no earlier than 2015-07-17; baseline start 2015-07-24 16:00 → 2015-07-24; baseline finish 2015-08-07 16:00 → 2015-08-07 |
| 32 | Incorporate 1st Pages review | 2015-08-11 15:00 → 2015-08-13 A (+2d) | 2015-08-25 15:00 → 2015-08-26 A (+1d) |  | 0% → 100% | 0.25d → none | baseline start 2015-08-07 16:00 → 2015-08-07; baseline finish 2015-08-21 16:00 → 2015-08-21 |
| 33 | Send proofed pages to Production | 2015-08-25 15:00 → 2015-08-26 A (+1d) | 2015-08-25 15:00 → 2015-08-26 A (+1d) |  | 0% → 100% | 0.25d → none | baseline start 2015-08-21 16:00 → 2015-08-21; baseline finish 2015-08-21 16:00 → 2015-08-21 |
| 34 | Enter page corrections and index | 2015-08-25 15:00 → 2015-08-27 A (+2d) | 2015-09-01 15:00 → 2015-09-02 A (+1d) |  | 0% → 100% | 0.25d → none | baseline start 2015-08-21 16:00 → 2015-08-21; baseline finish 2015-08-28 16:00 → 2015-08-28 |
| 35 | Cover design | 2015-09-01 15:00 → 2015-09-03 A (+2d) | 2015-09-08 15:00 → 2015-09-09 A (+1d) |  | 0% → 100% | 0.25d → none | baseline start 2015-08-28 16:00 → 2015-08-28; baseline finish 2015-09-04 16:00 → 2015-09-04 |
| 36 | **2nd Pages review** | 2015-09-08 15:00 → 2015-09-10 A (+2d) | 2015-09-25 15:00 → 2015-09-25 A | 13d → 12d | 0% → 100% | 0.25d → none | baseline start 2015-09-04 16:00 → 2015-09-04; baseline finish 2015-09-23 16:00 → 2015-09-23 |
| 37 | Proof and review | 2015-09-08 15:00 → 2015-09-10 A (+2d) | 2015-09-17 10:00 → 2015-09-18 A (+1d) |  | 0% → 100% | 0.25d → none | baseline start 2015-09-04 16:00 → 2015-09-04; baseline finish 2015-09-15 11:00 → 2015-09-15 |
| 38 | Send proofed pages to Production | 2015-09-17 10:00 → 2015-09-18 A (+1d) | 2015-09-17 10:00 → 2015-09-18 A (+1d) |  | 0% → 100% | 0.25d → none | baseline start 2015-09-15 11:00 → 2015-09-15; baseline finish 2015-09-15 11:00 → 2015-09-15 |
| 39 | Final review | 2015-09-18 15:00 → 2015-09-21 A (+3d) | 2015-09-25 15:00 → 2015-09-25 A |  | 0% → 100% | 0.25d → none | baseline start 2015-09-16 16:00 → 2015-09-16; baseline finish 2015-09-23 16:00 → 2015-09-23 |
| 40 | **Design book's companion website** | 2015-09-08 15:00 → 2015-09-10 A (+2d) | 2015-09-22 15:00 → 2015-09-23 (+1d) |  | 0% → 99% | 3.25d → 2d | baseline start 2015-09-04 16:00 → 2015-09-04; baseline finish 2015-09-18 16:00 → 2015-09-18 |
| 41 | Create mockup | 2015-09-08 15:00 → 2015-09-10 A (+2d) | 2015-09-18 15:00 → 2015-09-21 A (+3d) |  | 0% → 100% | 3.25d → none | baseline start 2015-09-04 16:00 → 2015-09-04; baseline finish 2015-09-16 16:00 → 2015-09-16 |
| 42 | Review with author | 2015-09-18 15:00 → 2015-09-22 A (+4d) | 2015-09-22 15:00 → 2015-09-23 (+1d) |  | 0% → 99% | 3.25d → 2d | baseline start 2015-09-16 16:00 → 2015-09-16; baseline finish 2015-09-18 16:00 → 2015-09-18 |
| 43 | **Color prep and printing** | 2015-09-28 08:00 → 2015-09-28 A | 2015-11-26 17:00 → 2015-11-26 A |  | 0% → 100% | 0d → none | baseline start 2015-09-23 16:00 → 2015-09-23; baseline finish 2015-11-26 16:00 → 2015-11-26 |
| 44 | Send to color house | 2015-09-28 08:00 → 2015-09-28 A | 2015-09-28 17:00 → 2015-09-28 A |  | 0% → 100% | 0d → none | baseline start 2015-09-23 16:00 → 2015-09-23; baseline finish 2015-09-28 16:00 → 2015-09-28 |
| 45 | Generate proofs | 2015-09-29 08:00 → 2015-09-29 A | 2015-10-12 17:00 → 2015-10-12 A |  | 0% → 100% | 0d → none | baseline start 2015-09-28 16:00 → 2015-09-28; baseline finish 2015-10-12 16:00 → 2015-10-12 |
| 46 | Print and ship | 2015-10-16 08:00 → 2015-10-16 A | 2015-11-26 17:00 → 2015-11-26 A |  | 0% → 100% | 0d → none | baseline start 2015-10-15 16:00 → 2015-10-15; baseline finish 2015-11-26 16:00 → 2015-11-26 |
| 47 | **Book launch prep** | 2015-09-29 08:00 → 2015-09-29 A | 2015-10-28 17:00 → 2015-10-28 |  | 0% → 99% | 21d → 0d | baseline start 2015-09-28 16:00 → 2015-09-28; baseline finish 2015-10-28 16:00 → 2015-10-28 |
| 48 | Launch planning | 2015-09-29 08:00 → 2015-09-29 A | 2015-10-05 17:00 → 2015-10-05 A |  | 0% → 100% | 21d → none | baseline start 2015-09-28 16:00 → 2015-09-28; baseline finish 2015-10-05 16:00 → 2015-10-05 |
| 49 | Assign launch team members | 2015-10-06 08:00 → 2015-10-06 A | 2015-10-06 17:00 → 2015-10-06 A |  | 0% → 100% | 21d → none | baseline start 2015-10-05 16:00 → 2015-10-05; baseline finish 2015-10-06 16:00 → 2015-10-06 |
| 50 | Complete author questionnaire | 2015-10-07 08:00 → 2015-10-07 A | 2015-10-13 17:00 → 2015-10-13 |  | 0% → 99% | 21d → 0d | baseline start 2015-10-06 16:00 → 2015-10-06; baseline finish 2015-10-13 16:00 → 2015-10-13 |
| 51 | Schedule author interviews | 2015-10-14 08:00 → 2015-10-14 A | 2015-10-14 17:00 → 2015-10-14 A |  | 0% → 100% | 21d → none | baseline start 2015-10-13 16:00 → 2015-10-13; baseline finish 2015-10-14 16:00 → 2015-10-14 |
| 52 | Design and order marketing material | 2015-10-15 08:00 → 2015-10-15 A | 2015-10-28 17:00 → 2015-10-28 A |  | 0% → 100% | 21d → none | baseline start 2015-10-14 16:00 → 2015-10-14; baseline finish 2015-10-28 16:00 → 2015-10-28 |
